# Proyecto de Graduación LoRA-HDL-QA

Schedule from MS Project XML, 2026-02-02 to 2026-10-08, costs in Q..
Tesis de Graduación
UNIS — Universidad del Istmo

## Calendars

- Guatemala 2026: Mon-Fri 08:00-12:00, 13:00-17:00; Sat-Sun off.

## Resources

| Resource | Unit | Rate |
| --- | --- | --- |
| Pablo Flores |  | 80 |
| MacBook M1 2020 | unidad |  |

## Schedule

| ID | WBS | Task | Duration | Start | Finish | Predecessors | Total slack | Free slack | Resources | Work | Cost |
| --- | --- | --- | --- | --- | --- | --- | --- | --- | --- | --- | --- |
| 1 | 1.1 | **INICIO** | 0h | 2026-02-02 | 2026-02-27 |  | 0d |  |  |  |  |
| 2 | 1.1.1 | **Inscripción del Tema** | 0h | 2026-02-02 | 2026-02-13 |  | 0d |  |  |  |  |
| 3 | 1.1.1.1 | Revisar normativo y reglamento de graduación | 8h | 2026-02-02 | 2026-02-02 |  | 0d |  | Pablo Flores | 8h | 6.4 |
| 4 | 1.1.1.2 | Delimitar el tema de investigación | 16h | 2026-02-03 | 2026-02-04 | 3 | 0d |  | Pablo Flores | 16h | 12.8 |
| 5 | 1.1.1.3 | Preparar formularios y documentación | 8h | 2026-02-05 | 2026-02-05 | 4 | 0d |  | Pablo Flores | 8h | 6.4 |
| 6 | 1.1.1.4 | Presentar solicitud formal ante la facultad | 4h | 2026-02-06 | 2026-02-06 | 5 | 0d |  | Pablo Flores | 4h | 3.2 |
| 7 | 1.1.1.5 | Período de espera — resolución institucional | 40h | 2026-02-06 | 2026-02-13 | 6 | 0d |  | Pablo Flores | 40h | 32 |
| 8 | 1.1.1.6 | Recibir aprobación formal del tema | 4h | 2026-02-13 | 2026-02-13 | 7 | 0d |  | Pablo Flores | 4h | 3.2 |
| 9 | 1.1.2 | **Asignación de Asesor** | 0h | 2026-02-03 | 2026-02-17 |  | 0.65d | 0d |  |  |  |
| 10 | 1.1.2.1 | Identificar y evaluar candidatos a asesor | 8h | 2026-02-03 | 2026-02-03 | 3 | 0.65d | 0d | Pablo Flores | 8h | 6.4 |
| 11 | 1.1.2.2 | Contactar y reunirse con candidatos | 8h | 2026-02-04 | 2026-02-04 | 10 | 0.65d | 0d | Pablo Flores | 8h | 6.4 |
| 12 | 1.1.2.3 | Seleccionar asesor definitivo | 4h | 2026-02-05 | 2026-02-05 | 11 | 0.65d |  | Pablo Flores | 4h | 3.2 |
| 13 | 1.1.2.4 | Formalizar carta de asignación del asesor | 4h | 2026-02-16 | 2026-02-16 | 8, 12 | 0d |  | Pablo Flores | 4h | 3.2 |
| 14 | 1.1.2.5 | Primera reunión de trabajo con asesor | 8h | 2026-02-16 | 2026-02-17 | 13 | 0d |  | Pablo Flores | 8h | 6.4 |
| 15 | 1.1.3 | **Plan del Proyecto** | 0h | 2026-02-17 | 2026-02-27 |  | 0d |  |  |  |  |
| 16 | 1.1.3.1 | Definir alcance, supuestos y restricciones | 16h | 2026-02-17 | 2026-02-19 | 14 | 0d |  | Pablo Flores | 16h | 12.8 |
| 17 | 1.1.3.2 | Elaborar EDT (WBS) del proyecto | 16h | 2026-02-19 | 2026-02-23 | 16 | 0d |  | Pablo Flores | 16h | 12.8 |
| 18 | 1.1.3.3 | Elaborar cronograma y línea base de tiempo | 16h | 2026-02-23 | 2026-02-25 | 17 | 0d |  | Pablo Flores | 16h | 12.8 |
| 19 | 1.1.3.4 | Identificar y evaluar riesgos | 8h | 2026-02-23 | 2026-02-24 | 17 | 0.1d |  | Pablo Flores | 8h | 6.4 |
| 20 | 1.1.3.5 | Elaborar plan de comunicación y seguimiento | 8h | 2026-02-23 | 2026-02-24 | 17 | 0.1d |  | Pablo Flores | 8h | 6.4 |
| 21 | 1.1.3.6 | Revisión y aprobación del plan con asesor | 16h | 2026-02-25 | 2026-02-27 | 18, 19, 20 | 0d |  | Pablo Flores | 16h | 12.8 |
| 22 | 1.2 | **PLANIFICACIÓN** | 0h | 2026-02-27 | 2026-04-20 | 21 | 0d |  |  |  |  |
| 23 | 1.2.1 | **Anteproyecto** | 0h | 2026-02-27 | 2026-03-27 |  | 0d |  |  |  |  |
| 24 | 1.2.1.1 | Revisión de literatura sobre el problema | 24h | 2026-02-27 | 2026-03-04 | 21 | 0d |  | Pablo Flores | 24h | 19.2 |
| 25 | 1.2.1.2 | Redactar planteamiento del problema | 24h | 2026-03-04 | 2026-03-09 | 24 | 0d |  | Pablo Flores; MacBook M1 2020 [1 unidad] | 24h | 19.2 |
| 26 | 1.2.1.3 | Definir objetivos general y específicos | 16h | 2026-03-09 | 2026-03-11 | 25 | 0d |  | Pablo Flores | 16h | 12.8 |
| 27 | 1.2.1.4 | Plantear hipótesis de investigación | 8h | 2026-03-11 | 2026-03-12 | 26 | 0.1d |  | Pablo Flores | 8h | 6.4 |
| 28 | 1.2.1.5 | Escribir justificación del proyecto | 16h | 2026-03-11 | 2026-03-13 | 26 | 0d |  | Pablo Flores | 16h | 12.8 |
| 29 | 1.2.1.6 | Redactar documento completo de anteproyecto | 24h | 2026-03-13 | 2026-03-18 | 27, 28 | 0d |  | Pablo Flores; MacBook M1 2020 [1 unidad] | 24h | 19.2 |
| 30 | 1.2.1.7 | Revisión del anteproyecto con asesor | 16h | 2026-03-18 | 2026-03-20 | 29 | 0d |  | Pablo Flores | 16h | 12.8 |
| 31 | 1.2.1.8 | Presentar anteproyecto ante comité evaluador | 8h | 2026-03-20 | 2026-03-23 | 30 | 0d |  | Pablo Flores | 8h | 6.4 |
| 32 | 1.2.1.9 | Período de espera — aprobación del comité | 32h | 2026-03-23 | 2026-03-27 | 31 | 0d |  | Pablo Flores | 32h | 25.6 |

| ID | WBS | Task | Duration | Start | Finish | Predecessors | Total slack | Free slack | Resources | Work | Cost |
| --- | --- | --- | --- | --- | --- | --- | --- | --- | --- | --- | --- |
| 33 | 1.2.2 | **Diseño Metodológico** | 0h | 2026-03-27 | 2026-04-20 |  | 0d |  |  |  |  |
| 34 | 1.2.2.1 | Revisar y comparar metodologías de investigación | 16h | 2026-03-27 | 2026-04-07 | 32 | 0d |  | Pablo Flores | 16h | 12.8 |
| 35 | 1.2.2.2 | Seleccionar y justificar metodología adoptada | 16h | 2026-04-07 | 2026-04-09 | 34 | 0d |  | Pablo Flores | 16h | 12.8 |
| 36 | 1.2.2.3 | Diseñar arquitectura general del experimento | 24h | 2026-04-09 | 2026-04-14 | 35 | 0d |  | Pablo Flores | 24h | 19.2 |
| 37 | 1.2.2.4 | Identificar y seleccionar datasets HDL / QA | 16h | 2026-04-09 | 2026-04-13 | 35 | 0.8d | 0d | Pablo Flores; MacBook M1 2020 [1 unidad] | 16h | 12.8 |
| 38 | 1.2.2.5 | Planificar pipeline de entrenamiento y evaluación | 16h | 2026-04-14 | 2026-04-16 | 36 | 0d |  | Pablo Flores; MacBook M1 2020 [1 unidad] | 16h | 12.8 |
| 39 | 1.2.2.6 | Definir métricas y criterios de éxito del modelo | 8h | 2026-04-14 | 2026-04-15 | 36 | 0.1d |  | Pablo Flores; MacBook M1 2020 [1 unidad] | 8h | 6.4 |
| 40 | 1.2.2.7 | Documentar y aprobar diseño metodológico | 16h | 2026-04-16 | 2026-04-20 | 38, 39 | 0d |  | Pablo Flores | 16h | 12.8 |
| 41 | 1.3 | **EJECUCIÓN** | 0h | 2026-04-13 | 2026-09-07 | 40 | 0d |  |  |  |  |
| 42 | 1.3.1 | **Marco Teórico** | 0h | 2026-04-20 | 2026-05-20 |  | 0d |  |  |  |  |
| 43 | 1.3.1.1 | Rev. bibliográfica: LLMs y arquitecturas Transformer | 24h | 2026-04-20 | 2026-04-23 | 40 | 0d |  | Pablo Flores; MacBook M1 2020 [1 unidad] | 24h | 19.2 |
| 44 | 1.3.1.2 | Rev. bibliográfica: LoRA y métodos PEFT | 32h | 2026-04-23 | 2026-04-29 | 43 | 0.2d |  | Pablo Flores | 32h | 25.6 |
| 45 | 1.3.1.3 | Rev. bibliográfica: HDL — VHDL / Verilog | 24h | 2026-04-23 | 2026-04-28 | 43 | 0d |  | Pablo Flores | 24h | 19.2 |
| 46 | 1.3.1.4 | Rev. bibliográfica: QA en diseño digital y EDA | 24h | 2026-04-28 | 2026-05-04 | 45 | 0d |  | Pablo Flores; MacBook M1 2020 [1 unidad] | 24h | 19.2 |
| 47 | 1.3.1.5 | Redactar sección — Fundamentos teóricos | 32h | 2026-05-04 | 2026-05-08 | 44, 46 | 0d |  | Pablo Flores; MacBook M1 2020 [1 unidad] | 32h | 25.6 |
| 48 | 1.3.1.6 | Redactar sección — LoRA aplicado a generación HDL | 32h | 2026-05-08 | 2026-05-14 | 47 | 0d |  | Pablo Flores; MacBook M1 2020 [1 unidad] | 32h | 25.6 |
| 49 | 1.3.1.7 | Redactar sección — Estado del arte | 24h | 2026-05-08 | 2026-05-13 | 47 | 0.1d |  | Pablo Flores; MacBook M1 2020 [1 unidad] | 24h | 19.2 |
| 50 | 1.3.1.8 | Revisión del marco teórico con asesor | 16h | 2026-05-14 | 2026-05-18 | 48, 49 | 0d |  | Pablo Flores | 16h | 12.8 |
| 51 | 1.3.1.9 | Corrección y ajuste del marco teórico | 16h | 2026-05-18 | 2026-05-20 | 50 | 0d |  | Pablo Flores | 16h | 12.8 |
| 52 | 1.3.2 | **Preprocesamiento de Datos** | 0h | 2026-04-13 | 2026-05-08 |  | 0.8d | 0d |  |  |  |
| 53 | 1.3.2.1 | Catalogar datasets HDL / QA disponibles | 16h | 2026-04-13 | 2026-04-15 | 37 | 0.8d | 0d | Pablo Flores; MacBook M1 2020 [1 unidad] | 16h | 12.8 |
| 54 | 1.3.2.2 | Descargar y verificar integridad de datasets | 8h | 2026-04-15 | 2026-04-16 | 53 | 0.8d | 0d | Pablo Flores; MacBook M1 2020 [1 unidad] | 8h | 6.4 |
| 55 | 1.3.2.3 | Análisis exploratorio de datos (EDA) | 16h | 2026-04-16 | 2026-04-20 | 54 | 0.8d | 0d | Pablo Flores; MacBook M1 2020 [1 unidad] | 16h | 12.8 |
| 56 | 1.3.2.4 | Limpieza y depuración de datos | 32h | 2026-04-20 | 2026-04-24 | 55 | 0.8d | 0d | Pablo Flores | 32h | 25.6 |
| 57 | 1.3.2.5 | Tokenización y formateo para fine-tuning LLM | 24h | 2026-04-24 | 2026-04-29 | 56 | 0.8d | 0d | Pablo Flores; MacBook M1 2020 [1 unidad] | 24h | 19.2 |
| 58 | 1.3.2.6 | Transformación y normalización de datos | 24h | 2026-04-29 | 2026-05-05 | 57 | 0.8d | 0d | Pablo Flores; MacBook M1 2020 [1 unidad] | 24h | 19.2 |
| 59 | 1.3.2.7 | Validación de calidad e integridad del dataset | 16h | 2026-05-05 | 2026-05-07 | 58 | 0.8d | 0d | Pablo Flores; MacBook M1 2020 [1 unidad] | 16h | 12.8 |
| 60 | 1.3.2.8 | Documentar pipeline de preprocesamiento | 8h | 2026-05-07 | 2026-05-08 | 59 | 0.8d |  | Pablo Flores | 8h | 6.4 |

| ID | WBS | Task | Duration | Start | Finish | Predecessors | Total slack | Resources | Work | Cost |
| --- | --- | --- | --- | --- | --- | --- | --- | --- | --- | --- |
| 61 | 1.3.3 | **Entrenamiento LoRA** | 0h | 2026-05-20 | 2026-07-02 |  | 0d |  |  |  |
| 62 | 1.3.3.1 | Configurar entorno Python / HuggingFace en MacBook | 16h | 2026-05-20 | 2026-05-22 | 51, 60 | 0d | Pablo Flores; MacBook M1 2020 [1 unidad] | 16h | 12.8 |
| 63 | 1.3.3.2 | Instalar y verificar librerías PEFT / LoRA | 8h | 2026-05-22 | 2026-05-25 | 62 | 0d | Pablo Flores; MacBook M1 2020 [1 unidad] | 8h | 6.4 |
| 64 | 1.3.3.3 | Seleccionar y cargar modelo base LLM | 8h | 2026-05-25 | 2026-05-26 | 63 | 0d | Pablo Flores; MacBook M1 2020 [1 unidad] | 8h | 6.4 |
| 65 | 1.3.3.4 | Implementar cargador de datos HDL personalizado | 24h | 2026-05-26 | 2026-05-29 | 64 | 0d | Pablo Flores; MacBook M1 2020 [1 unidad] | 24h | 19.2 |
| 66 | 1.3.3.5 | Configurar parámetros LoRA (r, alpha, dropout) | 16h | 2026-05-29 | 2026-06-02 | 65 | 0d | Pablo Flores; MacBook M1 2020 [1 unidad] | 16h | 12.8 |
| 67 | 1.3.3.6 | Ejecutar entrenamiento piloto (sanity check) | 16h | 2026-06-02 | 2026-06-04 | 66 | 0d | Pablo Flores; MacBook M1 2020 [1 unidad] | 16h | 12.8 |
| 68 | 1.3.3.7 | Analizar métricas de pérdida y accuracy del piloto | 16h | 2026-06-04 | 2026-06-08 | 67 | 0d | Pablo Flores; MacBook M1 2020 [1 unidad] | 16h | 12.8 |
| 69 | 1.3.3.8 | Ajustar hiperparámetros — iteración 1 | 24h | 2026-06-08 | 2026-06-11 | 68 | 0d | Pablo Flores | 24h | 19.2 |
| 70 | 1.3.3.9 | Ejecutar entrenamiento optimizado iteración 1 | 32h | 2026-06-11 | 2026-06-17 | 69 | 0d | Pablo Flores; MacBook M1 2020 [1 unidad] | 32h | 25.6 |
| 71 | 1.3.3.10 | Ajustar hiperparámetros — iteración 2 | 24h | 2026-06-17 | 2026-06-22 | 70 | 0d | Pablo Flores | 24h | 19.2 |
| 72 | 1.3.3.11 | Ejecutar entrenamiento final (modelo definitivo) | 32h | 2026-06-22 | 2026-06-26 | 71 | 0d | Pablo Flores; MacBook M1 2020 [1 unidad] | 32h | 25.6 |
| 73 | 1.3.3.12 | Guardar, versionar y respaldar modelo entrenado | 8h | 2026-06-26 | 2026-06-29 | 72 | 0d | Pablo Flores; MacBook M1 2020 [1 unidad] | 8h | 6.4 |
| 74 | 1.3.3.13 | Documentar proceso de entrenamiento completo | 16h | 2026-06-29 | 2026-07-02 | 73 | 1.2d | Pablo Flores; MacBook M1 2020 [1 unidad] | 16h | 12.8 |
| 75 | 1.3.4 | **Evaluación Benchmark** | 0h | 2026-06-29 | 2026-07-20 |  | 0d |  |  |  |
| 76 | 1.3.4.1 | Revisar benchmarks existentes para LLM / HDL | 16h | 2026-06-29 | 2026-07-02 | 73 | 0d | Pablo Flores; MacBook M1 2020 [1 unidad] | 16h | 12.8 |
| 77 | 1.3.4.2 | Definir métricas: BLEU, exactitud sintáctica, PASS@k | 8h | 2026-07-02 | 2026-07-03 | 76 | 0d | Pablo Flores | 8h | 6.4 |
| 78 | 1.3.4.3 | Implementar scripts de evaluación automatizada | 24h | 2026-07-03 | 2026-07-08 | 77 | 0d | Pablo Flores; MacBook M1 2020 [1 unidad] | 24h | 19.2 |
| 79 | 1.3.4.4 | Ejecutar benchmark — modelo LoRA fine-tuned | 24h | 2026-07-08 | 2026-07-13 | 78 | 0d | Pablo Flores; MacBook M1 2020 [1 unidad] | 24h | 19.2 |
| 80 | 1.3.4.5 | Ejecutar benchmark — modelo base (baseline) | 16h | 2026-07-08 | 2026-07-10 | 78 | 0.1d | Pablo Flores; MacBook M1 2020 [1 unidad] | 16h | 12.8 |
| 81 | 1.3.4.6 | Comparar y analizar: LoRA vs baseline | 24h | 2026-07-13 | 2026-07-16 | 79, 80 | 0d | Pablo Flores; MacBook M1 2020 [1 unidad] | 24h | 19.2 |
| 82 | 1.3.4.7 | Documentar resultados del benchmark | 16h | 2026-07-16 | 2026-07-20 | 81 | 0d | Pablo Flores; MacBook M1 2020 [1 unidad] | 16h | 12.8 |
| 83 | 1.3.5 | **Análisis de Resultados** | 0h | 2026-07-20 | 2026-08-05 |  | 0d |  |  |  |
| 84 | 1.3.5.1 | Compilar y consolidar todas las métricas | 8h | 2026-07-20 | 2026-07-21 | 82, 74 | 0d | Pablo Flores | 8h | 6.4 |
| 85 | 1.3.5.2 | Análisis estadístico descriptivo de resultados | 16h | 2026-07-21 | 2026-07-23 | 84 | 0d | Pablo Flores | 16h | 12.8 |
| 86 | 1.3.5.3 | Visualizar resultados (gráficas y tablas) | 16h | 2026-07-23 | 2026-07-27 | 85 | 0d | Pablo Flores; MacBook M1 2020 [1 unidad] | 16h | 12.8 |
| 87 | 1.3.5.4 | Comparar con modelos del estado del arte | 24h | 2026-07-27 | 2026-07-30 | 86 | 0d | Pablo Flores; MacBook M1 2020 [1 unidad] | 24h | 19.2 |
| 88 | 1.3.5.5 | Identificar fortalezas, limitaciones y trabajo futuro | 16h | 2026-07-30 | 2026-08-03 | 87 | 0d | Pablo Flores | 16h | 12.8 |
| 89 | 1.3.5.6 | Redactar análisis e interpretación de resultados | 16h | 2026-08-03 | 2026-08-05 | 88 | 0d | Pablo Flores; MacBook M1 2020 [1 unidad] | 16h | 12.8 |

| ID | WBS | Task | Duration | Start | Finish | Predecessors | Total slack | Free slack | Resources | Work | Cost |
| --- | --- | --- | --- | --- | --- | --- | --- | --- | --- | --- | --- |
| 90 | 1.3.6 | **Redacción del Informe Final** | 0h | 2026-08-05 | 2026-09-07 |  | 0d |  |  |  |  |
| 91 | 1.3.6.1 | Definir estructura y capítulos del informe | 8h | 2026-08-05 | 2026-08-06 | 89 | 0d |  | Pablo Flores | 8h | 6.4 |
| 92 | 1.3.6.2 | Redactar cap. 1 — Introducción | 16h | 2026-08-06 | 2026-08-10 | 91 | 0.1d |  | Pablo Flores; MacBook M1 2020 [1 unidad] | 16h | 12.8 |
| 93 | 1.3.6.3 | Integrar cap. 2 — Marco teórico (ajustar) | 16h | 2026-08-06 | 2026-08-10 | 91 | 0.1d |  | Pablo Flores | 16h | 12.8 |
| 94 | 1.3.6.4 | Redactar cap. 3 — Metodología | 24h | 2026-08-06 | 2026-08-11 | 91 | 0d |  | Pablo Flores; MacBook M1 2020 [1 unidad] | 24h | 19.2 |
| 95 | 1.3.6.5 | Redactar cap. 4 — Resultados y análisis | 24h | 2026-08-06 | 2026-08-11 | 91 | 0d |  | Pablo Flores; MacBook M1 2020 [1 unidad] | 24h | 19.2 |
| 96 | 1.3.6.6 | Redactar cap. 5 — Conclusiones y recomendaciones | 16h | 2026-08-11 | 2026-08-13 | 92, 93, 94, 95 | 0d |  | Pablo Flores; MacBook M1 2020 [1 unidad] | 16h | 12.8 |
| 97 | 1.3.6.7 | Elaborar referencias bibliográficas (APA / IEEE) | 8h | 2026-08-13 | 2026-08-14 | 96 | 0d |  | Pablo Flores | 8h | 6.4 |
| 98 | 1.3.6.8 | Revisar formato y estilo según normativo UNIS | 16h | 2026-08-14 | 2026-08-18 | 97 | 0d |  | Pablo Flores; MacBook M1 2020 [1 unidad] | 16h | 12.8 |
| 99 | 1.3.6.9 | Primera revisión con asesor (espera retroalim.) | 24h | 2026-08-18 | 2026-08-21 | 98 | 0d |  | Pablo Flores | 24h | 19.2 |
| 100 | 1.3.6.10 | Aplicar primera ronda de correcciones | 24h | 2026-08-21 | 2026-08-26 | 99 | 0d |  | Pablo Flores | 24h | 19.2 |
| 101 | 1.3.6.11 | Segunda revisión con asesor (espera retroalim.) | 40h | 2026-08-26 | 2026-09-02 | 100 | 0d |  | Pablo Flores | 40h | 32 |
| 102 | 1.3.6.12 | Aplicar segunda ronda de correcciones | 24h | 2026-09-02 | 2026-09-07 | 101 | 0d |  | Pablo Flores | 24h | 19.2 |
| 103 | 1.4 | **MONITOREO Y CONTROL** | 0h | 2026-02-27 | 2026-03-16 |  | 0d |  |  |  |  |
| 104 | 1.4.1 | **Seguimiento** | 0h | 2026-02-27 | 2026-03-16 |  | 13.95d | 0d |  |  |  |
| 105 | 1.4.1.1 | Planificar agenda y protocolo de reuniones | 8h | 2026-02-27 | 2026-03-02 | 21 | 13.95d | 0d | Pablo Flores | 8h | 6.4 |
| 106 | 1.4.1.2 | Conducir reuniones semanales con asesor | 80h | 2026-03-02 | 2026-03-16 | 105 | 13.95d | 0d | Pablo Flores | 80h | 64 |
| 107 | 1.4.1.3 | Elaborar reportes de avance mensuales | 40h | 2026-03-02 | 2026-03-09 | 105 | 14.45d | 0d | Pablo Flores | 40h | 32 |
| 108 | 1.4.1.4 | Actualizar y monitorear cronograma del proyecto | 16h | 2026-03-02 | 2026-03-04 | 105 | 14.75d | 0d | Pablo Flores | 16h | 12.8 |
| 109 | 1.4.2 | **Control de Cambios** | 0h | 2026-03-02 | 2026-03-13 |  | 14.05d | 0d |  |  |  |
| 110 | 1.4.2.1 | Registrar solicitudes de cambio formales | 16h | 2026-03-02 | 2026-03-04 | 105 | 14.05d | 0d | Pablo Flores | 16h | 12.8 |
| 111 | 1.4.2.2 | Evaluar y aprobar cambios con asesor | 16h | 2026-03-04 | 2026-03-06 | 110 | 14.05d | 0d | Pablo Flores | 16h | 12.8 |
| 112 | 1.4.2.3 | Implementar cambios aprobados | 24h | 2026-03-06 | 2026-03-11 | 111 | 14.05d | 0d | Pablo Flores; MacBook M1 2020 [1 unidad] | 24h | 19.2 |
| 113 | 1.4.2.4 | Documentar lecciones aprendidas | 16h | 2026-03-11 | 2026-03-13 | 112 | 14.05d | 0d | Pablo Flores | 16h | 12.8 |

| ID | WBS | Task | Type | Duration | Start | Finish | Predecessors | Total slack | Resources | Work | Cost |
| --- | --- | --- | --- | --- | --- | --- | --- | --- | --- | --- | --- |
| 114 | 1.5 | **CIERRE** |  | 0h | 2026-09-07 | 2026-10-08 | 102 | 0d |  |  |  |
| 115 | 1.5.1 | **Correcciones Finales** |  | 0h | 2026-09-07 | 2026-09-22 |  | 0d |  |  |  |
| 116 | 1.5.1.1 | Recibir retroalimentación final del asesor |  | 8h | 2026-09-07 | 2026-09-08 | 102 | 0d | Pablo Flores | 8h | 6.4 |
| 117 | 1.5.1.2 | Aplicar correcciones finales al documento |  | 24h | 2026-09-08 | 2026-09-11 | 116 | 0d | Pablo Flores | 24h | 19.2 |
| 118 | 1.5.1.3 | Revisión de ortografía, gramática y estilo |  | 8h | 2026-09-11 | 2026-09-14 | 117 | 0d | Pablo Flores | 8h | 6.4 |
| 119 | 1.5.1.4 | Formatear documento final según normativo UNIS |  | 16h | 2026-09-14 | 2026-09-17 | 118 | 0d | Pablo Flores | 16h | 12.8 |
| 120 | 1.5.1.5 | Aprobación final y firma del asesor |  | 24h | 2026-09-17 | 2026-09-22 | 119 | 0d | Pablo Flores | 24h | 19.2 |
| 121 | 1.5.2 | **Defensa Pública** |  | 0h | 2026-09-22 | 2026-10-02 |  | 0d |  |  |  |
| 122 | 1.5.2.1 | Preparar presentación PowerPoint para defensa |  | 16h | 2026-09-22 | 2026-09-24 | 120 | 0d | Pablo Flores; MacBook M1 2020 [1 unidad] | 16h | 12.8 |
| 123 | 1.5.2.2 | Elaborar material de apoyo y demo técnico |  | 8h | 2026-09-24 | 2026-09-25 | 122 | 0d | Pablo Flores; MacBook M1 2020 [1 unidad] | 8h | 6.4 |
| 124 | 1.5.2.3 | Realizar ensayos de presentación (mínimo 3) |  | 8h | 2026-09-25 | 2026-09-28 | 123 | 0d | Pablo Flores | 8h | 6.4 |
| 125 | 1.5.2.4 | Defensa oral ante el jurado evaluador |  | 8h | 2026-09-28 | 2026-09-29 | 124 | 0d | Pablo Flores | 8h | 6.4 |
| 126 | 1.5.2.5 | Período de espera — resolución y nota del jurado |  | 24h | 2026-09-29 | 2026-10-02 | 125 | 0d | Pablo Flores | 24h | 19.2 |
| 127 | 1.5.3 | **Entrega y Cierre** |  | 0h | 2026-10-02 | 2026-10-08 |  | 0d |  |  |  |
| 128 | 1.5.3.1 | Aplicar correcciones indicadas por el jurado |  | 16h | 2026-10-02 | 2026-10-06 | 126 | 0d | Pablo Flores | 16h | 12.8 |
| 129 | 1.5.3.2 | Imprimir, empastar y preparar copias finales |  | 4h | 2026-10-06 | 2026-10-06 | 128 | 0d | Pablo Flores | 4h | 3.2 |
| 130 | 1.5.3.3 | Entrega formal a biblioteca y facultad |  | 4h | 2026-10-07 | 2026-10-07 | 129 | 0d | Pablo Flores | 4h | 3.2 |
| 131 | 1.5.3.4 | Cierre administrativo del proyecto |  | 4h | 2026-10-07 | 2026-10-07 | 130 | 0d | Pablo Flores | 4h | 3.2 |
| 132 | 1.5.3.5 | HITO — Proyecto de Graduación Completado | milestone | 0h | 2026-10-08 | 2026-10-08 | 131 | 0d |  |  |  |
